# 试点项目

Schedule from a web Gantt chart, 2025-04-01 to 2025-04-30.
Every day is a working day

## Schedule

| ID | WBS | Task | Duration | Start | Finish |
| --- | --- | --- | --- | --- | --- |
| 2 | 1 | **示范变电站 部署实施工作** | 19d | 2025-04-12 | 2025-04-30 |
| 3 | 1.1 | 预警摄像头安装、人脸识别设备安装 | 5d | 2025-04-16 | 2025-04-20 |
| 4 | 1.2 | 网络贯通联调 | 14d | 2025-04-12 | 2025-04-25 |
| 5 | 1.3 | 智巡接入联调 | 10d | 2025-04-21 | 2025-04-30 |
| 6 | 2 | **智巡系统工作** | 14d | 2025-04-07 | 2025-04-20 |
| 7 | 2.1 | 摄像机接入 | 14d | 2025-04-07 | 2025-04-20 |
| 8 | 2.2 | 站端智巡作业监督功能开发 | 6d | 2025-04-07 | 2025-04-12 |
| 9 | 3 | 流媒体中台风控业务-数据分析与状态服务开发 | 6d | 2025-04-14 | 2025-04-19 |
| 10 | 4 | 风控平台无计划研判预警前端展示界面效果图设计 | 8d | 2025-04-01 | 2025-04-08 |
| 11 | 5 | 风控平台无计划研判预警相关功能开发 | 8d | 2025-04-10 | 2025-04-17 |
| 12 | 6 | 风控平台与流媒体中台、智巡系统的系统间对接联调工作 | 6d | 2025-04-21 | 2025-04-26 |
